# PeNcIL – Planirani raspored aktivnosti

Schedule from MS Project, 2016-03-14 to 2016-05-30, 4 hours a day.
SWETeam

## Calendars

- Standard: Mon-Sun 16:00-20:00.

## Resources

| Resource |
| --- |
| Architect |
| Architecture Reviewer |
| Business-Process Analyst |
| Business Designer |
| Business-Model Reviewer |
| Code Reviewer |
| Configuration Manager |
| Course Developer |
| Database Designer |
| Deployment Manager |
| Design Reviewer |
| Designer |
| Implementer |
| Integration Tester |
| Performance Tester |
| Process Engineer |
| Project Manager |
| Requirements Reviewer |
| Stakeholder |
| System Administrator |
| System Analyst |
| System Integrator |
| System Tester |
| Technical Writer |
| Test Designer |
| Tool Smith |
| Use-Case Author |
| User-Interface Designer |
| Milan |

## Schedule

| ID | WBS | Task | Type | Duration | Start | Finish | Predecessors | Baseline start | Baseline finish | Baseline duration | Total slack | Free slack | Constraint |
| --- | --- | --- | --- | --- | --- | --- | --- | --- | --- | --- | --- | --- | --- |
| 1 | 1 | **Očekivani rezultati** |  | 76d | 2016-03-15 | 2016-05-30 |  | 1998-06-11 | 1998-10-19 | 186d | 0d |  |  |
| 2 | 1.1 | Početak projekta | milestone | 0d | 2016-03-15 | 2016-03-15 | 13SS | 1998-06-11 | 1998-06-11 | 0d | 76d |  | finish no earlier than 2016-03-15 |
| 3 | 1.2 | Vizija sistema | milestone | 0d | 2016-03-21 | 2016-03-21 | 16 | 1998-06-17 | 1998-06-17 | 0d | 70d |  | start no earlier than 2016-03-21 |
| 4 | 1.3 | Dokument o zahtevima | milestone | 0d | 2016-04-04 | 2016-04-04 | 22 |  |  |  | 56d |  | finish no earlier than 2016-04-04 |
| 5 | 1.4 | Arhitekturni prototip | milestone | 0d | 2016-04-14 | 2016-04-14 | 23 |  |  |  | 45.25d |  | finish no earlier than 2016-04-07 |
| 6 | 1.5 | Arhitekturni projekat | milestone | 0d | 2016-04-22 | 2016-04-22 | 25 | 1998-08-20 | 1998-08-20 | 0d | 37.25d |  | finish no earlier than 2016-04-18 |
| 7 | 1.6 | Detaljni projekat | milestone | 0d | 2016-05-06 | 2016-05-06 | 29 | 1998-10-06 | 1998-10-06 | 0d | 23.25d |  | finish no earlier than 2016-05-02 |
| 8 | 1.7 | Plan testiranja | milestone | 0d | 2016-05-09 | 2016-05-09 | 30 |  |  |  | 20.25d |  | finish no earlier than 2016-05-09 |
| 9 | 1.8 | Izveštaj o testiranju | milestone | 0d | 2016-05-16 | 2016-05-16 | 36 |  |  |  | 13.25d |  | finish no earlier than 2016-05-16 |
| 10 | 1.9 | Konačna verzija | milestone | 0d | 2016-05-16 | 2016-05-16 | 33 |  |  |  | 13.25d |  | finish no earlier than 2016-05-16 |
| 11 | 1.10 | Prezentacija proizvoda | milestone | 0d | 2016-05-30 | 2016-05-30 | 39 |  |  |  | 0d |  | finish no earlier than 2016-05-30 |
| 13 | 2 | **Faza planiranja projekta** |  | 14d | 2016-03-14 | 2016-03-28 |  | 1998-06-11 | 1998-06-17 | 10d | 18d | 0d |  |
| 14 | 2.1 | **Preliminarna iteracija** |  | 14d | 2016-03-14 | 2016-03-28 |  | 1998-06-11 | 1998-06-17 | 10d | 18d |  |  |
| 15 | 2.1.1 | Definisanje zahteva |  | 3d | 2016-03-14 | 2016-03-17 |  | 1998-06-11 | 1998-06-15 | 6d | 18d | 0d | finish no earlier than 2016-03-17 |
| 16 | 2.1.2 | Izrada vizije sistema |  | 4d | 2016-03-17 | 2016-03-21 | 15 | 1998-06-11 | 1998-06-17 | 10d | 18d | 0d |  |
| 17 | 2.1.3 | Modelovanje domena |  | 1d | 2016-03-21 | 2016-03-22 | 16 | 1998-06-11 | 1998-06-17 | 10d | 18d | 0d |  |
| 18 | 2.1.4 | Analiza slučajeva korišćenja |  | 6d | 2016-03-22 | 2016-03-28 | 17 | 1998-06-19 | 1998-06-23 | 6d | 18d |  |  |
| 20 | 3 | **Faza razrade projekta** |  | 25.75d | 2016-03-28 | 2016-04-22 | 13 | 1998-06-18 | 1998-08-20 | 92d | 10.25d | 0d |  |
| 21 | 3.1 | **Iteracija R1 - Razvoj arhitekturnog prototipa** |  | 25.75d | 2016-03-28 | 2016-04-22 |  | 1998-06-18 | 1998-07-20 | 46d | 10.25d |  |  |
| 22 | 3.1.1 | Izrada dokumenta o zahtevima |  | 7d | 2016-03-28 | 2016-04-04 |  | 1998-06-19 | 1998-06-25 | 10d | 29d | 0d |  |
| 23 | 3.1.2 | Implementacija arhitekturnog prototipa |  | 10d | 2016-04-05 | 2016-04-14 |  | 1998-07-01 | 1998-07-10 | 16d | 10.25d | 0d | start no earlier than 2016-04-05 |
| 24 | 3.1.3 | Testiranje arhitekture |  | 1d | 2016-04-15 | 2016-04-15 | 23 | 1998-07-08 | 1998-07-16 | 14d | 10.25d | 0d |  |
| 25 | 3.1.4 | Izrada arhitekturnog projekta |  | 7d | 2016-04-16 | 2016-04-22 | 24 | 1998-06-23 | 1998-07-06 | 20d | 10.25d | 0d |  |
| 27 | 4 | **Faza izrade projekta** |  | 24d | 2016-04-23 | 2016-05-16 | 20 | 1998-08-21 | 1998-10-06 | 66d | 5.25d |  |  |
| 28 | 4.1 | **Iteracija I1 - Razvoj beta verzije** |  | 19d | 2016-04-23 | 2016-05-11 |  | 1998-08-21 | 1998-09-04 | 22d | 5.25d | 0d |  |
| 29 | 4.1.1 | Izrada detaljnog projekta |  | 14d | 2016-04-23 | 2016-05-06 |  |  |  |  | 10.25d | 0d |  |
| 30 | 4.1.2 | Izrada plana testiranja |  | 4d | 2016-05-06 | 2016-05-09 |  |  |  |  | 5.25d | 0d | start no earlier than 2016-05-06 |
| 31 | 4.1.3 | Testiranje sistema |  | 2d | 2016-05-10 | 2016-05-11 | 30 | 1998-08-24 | 1998-09-02 | 16d | 5.25d |  |  |
| 32 | 4.1.4 | Izrada izveštaja o testiranju |  | 2d | 2016-05-10 | 2016-05-11 | 30 | 1998-08-21 | 1998-09-04 | 22d | 5.25d |  |  |

| ID | WBS | Task | Duration | Start | Finish | Predecessors | Baseline start | Baseline finish | Baseline duration | Total slack | Free slack |
| --- | --- | --- | --- | --- | --- | --- | --- | --- | --- | --- | --- |
| 33 | 4.2 | **Iteracija I2 - Razvoj konačne verzije** | 5d | 2016-05-12 | 2016-05-16 | 28 | 1998-09-07 | 1998-09-21 | 22d | 5.25d | 0d |
| 34 | 4.2.1 | Implementacija konačne verzije | 4d | 2016-05-12 | 2016-05-15 |  | 1998-09-08 | 1998-09-15 | 12d | 5.25d | 0d |
| 35 | 4.2.2 | Testiranje konačne verzije | 1d | 2016-05-16 | 2016-05-16 | 34 | 1998-09-08 | 1998-09-17 | 16d | 5.25d |  |
| 36 | 4.2.3 | Ažuriranje izveštaja o testiranju | 1d | 2016-05-16 | 2016-05-16 | 34 | 1998-09-07 | 1998-09-21 | 22d | 5.25d | 0d |
| 38 | 5 | **Faza okončanja projekta** | 8d | 2016-05-17 | 2016-05-24 | 33 | 1998-10-07 | 1998-10-19 | 18d | 5.25d |  |
| 39 | 5.1 | **Iteracija O1 - Instalacija sistema** | 8d | 2016-05-17 | 2016-05-24 |  | 1998-10-07 | 1998-10-19 | 18d | 5.25d |  |
| 40 | 5.1.1 | Sređivanje projektne dokumentacije | 7d | 2016-05-17 | 2016-05-23 |  |  |  |  | 5.25d | 0d |
| 41 | 5.1.2 | Instalacija sistema | 1d | 2016-05-24 | 2016-05-24 | 40 |  |  |  | 5.25d |  |
